# DDL_ProjectSchedule_v1.0_EN

How a schedule from MS Project changed from version to version. A marks actual dates.

## Version 1 (saved 2016-05-18)

Note of the change: demo

| ID | WBS | Task | Duration | Start | Finish | Predecessors | Total float | Constraint |
| --- | --- | --- | --- | --- | --- | --- | --- | --- |
| 1 | 1 | **IVSN** | 80d | 2016-05-09 | 2016-08-26 |  |  |  |
| 2 | 1.1 | **Initiation** | 15d | 2016-05-09 | 2016-05-27 |  |  |  |
| 3 |  | Form up team roles | 0.5d | 2016-05-09 | 2016-05-09 |  | 1d |  |
| 4 |  | Select project idea | 0.5d | 2016-05-09 | 2016-05-09 | 3 | 1d |  |
| 5 |  | Kick-off meeting | 0d | 2016-05-09 | 2016-05-09 | 4 | 14d |  |
| 6 | 1.1.4 | **Develop project idea** | 2d | 2016-05-10 | 2016-05-11 | 4 | 0.5d |  |
| 7 |  | Define project scope | 0.5d | 2016-05-10 | 2016-05-10 |  | 1.5d |  |
| 8 |  | Define project features | 0.5d | 2016-05-10 | 2016-05-10 | 7 | 1.5d |  |
| 9 |  | SRS/PP Review checklist | 1d | 2016-05-11 | 2016-05-11 |  |  | start no earlier than 2016-05-11 |
| 10 | 1.1.5 | **Project Introduction** | 4d | 2016-05-12 | 2016-05-18 | 6 |  |  |
| 11 |  | Create Project Introduction | 2d | 2016-05-12 | 2016-05-16 |  | 0d |  |
| 12 |  | Review Project Introduction | 1d | 2016-05-16 | 2016-05-17 | 11 | 0d |  |
| 13 |  | Update Project Introduction | 1d | 2016-05-17 | 2016-05-18 | 12 | 0d |  |
| 14 |  | Complete Project Introduction | 0d | 2016-05-18 | 2016-05-18 | 13 | 72.5d | start no earlier than 2016-05-18 |
| 15 | 1.1.6 | **Project Plan** | 6.5d | 2016-05-12 | 2016-05-20 |  |  |  |
| 16 |  | Create Project Plan in MS Word | 3d | 2016-05-12 | 2016-05-17 |  | 3.5d |  |
| 17 |  | Create Project Schedule in .mmp file | 1.5d | 2016-05-16 | 2016-05-17 | 16FF | 3.5d |  |
| 18 |  | Create CM Plan | 1d | 2016-05-16 | 2016-05-17 | 16FF | 3.5d |  |
| 19 |  | Review Project Plan, CMPlan, Schedule | 0.5d | 2016-05-18 | 2016-05-18 | 16, 17, 18 | 71d | start no earlier than 2016-05-18 |
| 20 |  | Update Project Plan, CMPlan, Schedule | 0.5d | 2016-05-19 | 2016-05-19 | 19 | 70d | finish no earlier than 2016-05-19 |
| 21 |  | Complete Project Plan | 1d | 2016-05-20 | 2016-05-20 | 20 | 70d | start no earlier than 2016-05-20 |
| 22 | 1.1.7 | **User Requirement Specification** | 3d | 2016-05-11 | 2016-05-13 |  |  |  |
| 23 |  | Create User Requirement Sepecification | 2d | 2016-05-11 | 2016-05-12 |  | 0d |  |
| 24 |  | Review User Requirement Specification | 0.5d | 2016-05-13 | 2016-05-13 | 23 | 0d |  |
| 25 |  | Update User Requirement Specification | 0.5d | 2016-05-13 | 2016-05-13 | 24 | 0d |  |
| 26 |  | Complete User Requirement Specification | 0d | 2016-05-13 | 2016-05-13 | 25 | 0d |  |
| 27 | 1.1.8 | **Q&A Sheet** | 2d | 2016-05-19 | 2016-05-20 |  | 0d |  |
| 28 |  | Create Q&A sheet | 1d | 2016-05-19 | 2016-05-19 |  |  |  |
| 29 |  | Review Q&A sheet | 0.5d | 2016-05-20 | 2016-05-20 | 28 |  |  |
| 30 |  | Translate Q&A sheet to Japanese | 0.5d | 2016-05-20 | 2016-05-20 | 29 |  |  |
| 31 |  | Create progress report 1 | 0.5d | 2016-05-20 | 2016-05-20 |  | 5.5d | start no earlier than 2016-05-20 |
| 32 |  | Submit progress report 1 | 0d | 2016-05-20 | 2016-05-20 | 31, 22, 15, 27 | 5d |  |
| 33 | 1.1.11 | **Technology Research (Part 1)** | 3d | 2016-05-23 | 2016-05-25 |  |  |  |
| 34 |  | Study .net MVC 5 | 3d | 2016-05-23 | 2016-05-25 |  | 67d | start no earlier than 2016-05-23 |
| 35 |  | Study AngularJS | 3d | 2016-05-23 | 2016-05-25 |  | 0d |  |
| 36 |  | Study Bootstraps, HTML5 & CSS3 | 3d | 2016-05-23 | 2016-05-25 |  | 0d |  |
| 37 | 1.1.12 | **Enviroment** | 2d | 2016-05-26 | 2016-05-27 |  |  |  |
| 38 |  | Create guideline to install and use tools & environments | 1d | 2016-05-26 | 2016-05-26 |  |  |  |
| 39 |  | Install tool & enviroment | 0.5d | 2016-05-27 | 2016-05-27 |  |  |  |
| 40 |  | Training tool and enviroment | 0.5d | 2016-05-27 | 2016-05-27 |  |  |  |
| 41 | 1.2 | **Solution** | 25d | 2016-05-30 | 2016-07-01 | 2 |  |  |
| 42 | 1.2.1 | **Technology Research (Part 2)** | 5d | 2016-05-30 | 2016-06-03 |  |  |  |
| 43 |  | Learn | 3d | 2016-05-30 | 2016-06-01 |  |  |  |
| 44 |  | Demo & Prototypes | 5d | 2016-05-30 | 2016-06-03 |  |  |  |
| 45 | 1.2.3 | **Software Requirement Specification** | 5d | 2016-06-06 | 2016-06-10 |  |  |  |
| 46 | 1.2.3.1 | **Functional Requirements Specification** | 2d | 2016-06-06 | 2016-06-07 |  |  |  |
| 47 |  | Define User Client Module functional Requirements | 1d | 2016-06-06 | 2016-06-06 |  |  |  |
| 48 |  | Define Admin Module functional Requirments | 1d | 2016-06-07 | 2016-06-07 | 47SS |  |  |
| 49 | 1.2.3.2 | **Non-functional Requirements Specification** | 3d | 2016-06-06 | 2016-06-08 |  |  |  |
| 50 |  | Define Security Requirements | 1d | 2016-06-06 | 2016-06-06 |  |  |  |
| 51 |  | Define Performane Requirements | 1d | 2016-06-07 | 2016-06-07 |  |  |  |
| 52 |  | Define User-interface Requirements | 1d | 2016-06-08 | 2016-06-08 |  |  | start no earlier than 2016-06-08 |
| 53 | 1.2.4 | **System Design** | 15d | 2016-06-01 | 2016-06-21 |  |  |  |
| 54 |  | Create design review checklist | 1d | 2016-06-01 | 2016-06-01 |  |  |  |
| 55 | 1.2.4.2 | **Architectural Design** | 3d | 2016-06-01 | 2016-06-03 |  |  |  |
| 56 |  | Define architectural design | 1d | 2016-06-01 | 2016-06-01 |  | 2d |  |
| 57 |  | Define system features | 2d | 2016-06-01 | 2016-06-02 |  | 1d |  |
| 58 |  | Study and choose suitable architectural design | 2d | 2016-06-01 | 2016-06-02 |  | 1d |  |
| 59 |  | Create Architectural design | 3d | 2016-06-01 | 2016-06-03 |  | 0d |  |
| 60 |  | Review architectural design | 1d | 2016-06-01 | 2016-06-01 |  | 2d |  |
| 61 |  | Update Architectural Design | 1d? | 2016-06-01 | 2016-06-01 |  | 2d |  |
| 62 |  | Complete Architectural Design version 1.0 | 0d | 2016-06-03 | 2016-06-03 | 58 |  |  |
| 63 | 1.2.4.3 | **Screen design** | 5d | 2016-06-01 | 2016-06-07 |  |  |  |
| 64 |  | Create screen flow document | 2d | 2016-06-01 | 2016-06-02 |  | 3d |  |
| 65 |  | Create client screen design | 2d | 2016-06-01 | 2016-06-02 |  | 3d |  |
| 66 |  | Create admin screen design | 2d | 2016-06-01 | 2016-06-02 |  | 3d |  |
| 67 |  | Review screen design | 1d | 2016-06-01 | 2016-06-01 |  | 4d |  |
| 68 |  | Update screen design | 1d | 2016-06-01 | 2016-06-01 |  | 4d |  |
| 69 |  | Complete screen design | 0d | 2016-06-01 | 2016-06-01 |  | 5d |  |
| 70 | 1.2.4.4 | **Database design** | 3d? | 2016-06-01 | 2016-06-03 |  | 12d |  |

| ID | WBS | Task | Duration | Start | Finish | Predecessors | Total float |
| --- | --- | --- | --- | --- | --- | --- | --- |
| 71 |  | Create database design | 3d | 2016-06-01 | 2016-06-03 |  | 12d |
| 72 |  | Review database design | 0.5d? | 2016-06-01 | 2016-06-01 |  | 14.5d |
| 73 |  | Update database design | 1d | 2016-06-01 | 2016-06-01 |  | 14d |
| 74 |  | Complete database design | 0d | 2016-06-01 | 2016-06-01 |  | 15d |
| 75 | 1.2.4.5 | **Class/Component Design** | 5d | 2016-06-15 | 2016-06-21 |  |  |
| 76 |  | Define Class and Component | 1d | 2016-06-15 | 2016-06-15 |  | 4d |
| 77 |  | Create Class/component design | 3d | 2016-06-15 | 2016-06-17 |  | 2d |
| 78 |  | Review Class/component design | 1d | 2016-06-15 | 2016-06-15 |  | 4d |
| 79 |  | Update Class/component design | 1d | 2016-06-15 | 2016-06-15 |  | 4d |
| 80 |  | Complete Class/component design | 0d | 2016-06-15 | 2016-06-15 |  | 5d |
| 81 |  | Create progress report 2 | 1d | 2016-06-03 | 2016-06-06 |  |  |
| 82 |  | Submit progress report 2 | 0d | 2016-06-08 | 2016-06-08 |  |  |
| 83 | 1.2.7 | **Testing** | 6d? | 2016-06-13 | 2016-06-20 | 82 |  |
| 84 |  | Create test plan/case checklists | 1d | 2016-06-13 | 2016-06-13 |  | 0d |
| 85 |  | Create test plan | 3d | 2016-06-14 | 2016-06-16 | 84 | 0d |
| 86 |  | Review test plan | 1d | 2016-06-17 | 2016-06-17 | 85 | 0d |
| 87 |  | Update test plan | 1d? | 2016-06-20 | 2016-06-20 | 86 | 0d |
| 88 |  | Test plan complete | 0d | 2016-06-20 | 2016-06-20 | 87 | 0d |
| 89 |  | Create progress report 3 | 1d | 2016-06-17 | 2016-06-17 |  |  |
| 90 |  | Submit progress report 3 | 0d | 2016-06-24 | 2016-06-24 |  |  |
| 91 | 1.3 | **Construction** | 31d | 2016-07-05 | 2016-08-16 | 41 |  |
| 92 | 1.3.1 | **Define Coding Standards** | 1d? | 2016-07-05 | 2016-07-05 |  | 0d |
| 93 |  | Create Coding Convention | 1d? | 2016-07-05 | 2016-07-05 |  | 8d |
| 94 |  | Create Code & UT Test review checklist | 1d? | 2016-07-05 | 2016-07-05 |  | 0d |
| 95 | 1.3.2 | **Screen Design** | 2d | 2016-07-05 | 2016-07-06 |  | 10d |
| 96 |  | Refine screen design document and prototype | 2d | 2016-07-05 | 2016-07-06 |  | 10d |
| 97 | 1.3.3 | **Coding & Unit test** | 18d | 2016-07-06 | 2016-07-29 |  | 8d |
| 98 |  | Structure core modules & source code common | 3d | 2016-07-06 | 2016-07-08 | 93 | 8d |
| 99 | 1.3.3.2 | **Client User Module** | 10d | 2016-07-11 | 2016-07-22 | 98, 95, 92 | 8d |
| 100 |  | Home Page Module | 3d | 2016-07-11 | 2016-07-13 |  | 10d |
| 101 |  | Login/ Logout Module | 2d | 2016-07-14 | 2016-07-15 | 100 | 10d |
| 102 | 1.3.3.2.3 | **Project module** | 8d | 2016-07-11 | 2016-07-20 |  | 8d |
| 103 |  | Create/manage a project Module | 5d | 2016-07-11 | 2016-07-15 |  | 8d |
| 104 |  | View/Back a project Module | 3d | 2016-07-18 | 2016-07-20 | 103 | 8d |
| 105 |  | User Personal Page Module | 3d | 2016-07-11 | 2016-07-13 |  | 9d |
| 106 |  | Search Module | 2d | 2016-07-21 | 2016-07-22 | 102 | 8d |
| 107 |  | Message Module | 4d | 2016-07-14 | 2016-07-19 | 105 | 9d |
| 108 | 1.3.3.3 | **Admin Module** | 10d | 2016-07-18 | 2016-07-29 | 98, 95, 92 | 8d |
| 109 |  | Login/ Logout module | 2d | 2016-07-18 | 2016-07-19 | 101 | 10d |
| 110 |  | Manage Users Module | 4d | 2016-07-20 | 2016-07-25 | 107 | 9d |
| 111 |  | Manage Projects Module | 5d | 2016-07-25 | 2016-07-29 | 106 | 8d |
| 112 |  | Manage Backings Module | 3d | 2016-07-20 | 2016-07-22 | 109 | 10d |
| 113 |  | Manage Categories Module | 3d | 2016-07-25 | 2016-07-27 | 112 | 10d |
| 114 |  | Mangage Silder Module | 3d | 2016-07-26 | 2016-07-28 | 110 | 9d |
| 115 |  | Complete Coding | 0d | 2016-07-29 | 2016-07-29 | 99, 108 | 8d |
| 116 |  | Create Progress Report 4 | 1d? | 2016-08-01 | 2016-08-01 | 95, 97 | 11d |
| 117 |  | Submit Progress Report 4 | 0d | 2016-08-01 | 2016-08-01 | 116 | 11d |
| 118 | 1.3.6 | **Testing** | 26d? | 2016-07-06 | 2016-08-10 |  | 0d |
| 119 | 1.3.6.1 | **Writing test case (continue)** | 10d? | 2016-07-06 | 2016-07-19 | 94 | 0d |
| 120 | 1.3.6.1.1 | **System test case** | 5d? | 2016-07-06 | 2016-07-12 |  | 0d |
| 121 |  | Create system test case | 3d | 2016-07-06 | 2016-07-08 |  | 0d |
| 122 |  | Review system test case | 1d? | 2016-07-11 | 2016-07-11 | 121 | 0d |
| 123 |  | Update system test case | 1d? | 2016-07-12 | 2016-07-12 | 122 | 0d |
| 124 | 1.3.6.1.2 | **Integration test case** | 5d? | 2016-07-13 | 2016-07-19 | 120 | 0d |
| 125 |  | Create integration test case | 3d | 2016-07-13 | 2016-07-15 |  | 0d |
| 126 |  | Review integration test case | 1d? | 2016-07-18 | 2016-07-18 | 125 | 0d |
| 127 |  | Update integration test case | 1d? | 2016-07-19 | 2016-07-19 | 126 | 0d |
| 128 |  | Writing test case complete | 0d | 2016-07-19 | 2016-07-19 | 124 | 0d |
| 129 | 1.3.6.2 | **Execute Test Round 1** | 8d | 2016-07-20 | 2016-07-29 | 119 | 0d |
| 130 |  | Execute Integration Test | 3d | 2016-07-20 | 2016-07-22 |  | 0d |
| 131 |  | Fix bug Integration Test | 2d | 2016-07-25 | 2016-07-26 | 130 | 10d |
| 132 |  | Execute System Test | 3d | 2016-07-25 | 2016-07-27 | 130 | 0d |
| 133 |  | Fix bug System Test | 2d | 2016-07-28 | 2016-07-29 | 132 | 7d |
| 134 |  | Update Test Case | 1d | 2016-07-28 | 2016-07-28 | 132 | 0d |
| 135 | 1.3.6.4 | **Execute Test Round 2** | 8d | 2016-07-29 | 2016-08-09 | 134 | 0d |
| 136 |  | Execute Integration Test | 3d | 2016-07-29 | 2016-08-02 |  | 0d |
| 137 |  | Fix bug Integration Test | 2d | 2016-08-03 | 2016-08-04 | 136 | 3d |
| 138 |  | Execute System Test | 3d | 2016-08-03 | 2016-08-05 | 136 | 0d |
| 139 |  | Fix bug System Test | 2d | 2016-08-08 | 2016-08-09 | 138 | 0d |
| 140 |  | Create Test Report | 1d | 2016-08-10 | 2016-08-10 | 129, 135 | 0d |

| ID | WBS | Task | Duration | Start | Finish | Predecessors | Total float |
| --- | --- | --- | --- | --- | --- | --- | --- |
| 141 |  | Testing Complete | 0d | 2016-08-10 | 2016-08-10 | 140 | 0d |
| 142 | 1.3.7 | **Quality Control** | 3d | 2016-08-11 | 2016-08-15 | 118, 97 | 0d |
| 143 |  | Create Quality Report | 2d | 2016-08-11 | 2016-08-12 |  | 0d |
| 144 |  | Review Quality Report | 0.5d | 2016-08-15 | 2016-08-15 | 143 | 0d |
| 145 |  | Update Quality Report | 0.5d | 2016-08-15 | 2016-08-15 | 144 | 0d |
| 146 |  | Create Progress Report 5 | 1d? | 2016-08-16 | 2016-08-16 | 142 | 0d |
| 147 |  | Submit Progress Report 5 | 0d | 2016-08-16 | 2016-08-16 | 146 | 0d |
| 148 | 1.4 | **Termination** | 8d | 2016-08-17 | 2016-08-26 | 91 |  |
| 149 |  | Create lesson learned | 1d | 2016-08-17 | 2016-08-17 |  | -2d |
| 150 | 1.4.2 | **Final Report Document** | 2d | 2016-08-18 | 2016-08-19 | 149 | -2d |
| 151 |  | Create Final Report document | 2d | 2016-08-18 | 2016-08-19 |  | -2d |
| 152 |  | Create Installing Guide | 2d | 2016-08-18 | 2016-08-19 |  | -2d |
| 153 |  | Create User Guideline | 2d | 2016-08-18 | 2016-08-19 |  | -2d |
| 154 |  | Create Project Result Assessment | 2d | 2016-08-18 | 2016-08-19 |  | -2d |
| 155 |  | Create Slides for Final Presentation | 2d | 2016-08-18 | 2016-08-19 |  | -2d |
| 156 |  | Submit all Final Documents and Source codes | 0d | 2016-08-19 | 2016-08-19 | 150 | 5d |
| 157 | 1.4.4 | **Pre-closing** | 5d | 2016-08-22 | 2016-08-26 |  | -2d |
| 158 |  | Trainning presentation | 5d | 2016-08-22 | 2016-08-26 | 150 | -2d |
| 159 | 1.4.5 | **Closing** | 2d | 2016-08-24 | 2016-08-26 | 158 |  |
| 160 |  | Presentation for Capstone Project | 2d | 2016-08-25 | 2016-08-26 |  | 0d |
| 161 |  | Complete Project | 0d | 2016-08-26 | 2016-08-26 | 160 | 0d |

## Version 2 (saved 2016-05-19)

Last finish stays 2016-08-26.

Changed:

| ID | Task | Start | Finish | Duration | Total float | Predecessors | Other |
| --- | --- | --- | --- | --- | --- | --- | --- |
| 43 | Learn DataBase |  |  |  |  |  | was named Learn |
| 44 | Demo & Prototypes | 2016-05-30 → 2016-05-25 (-5d) | 2016-06-03 → 2016-05-31 (-3d) |  |  |  |  |
| 59 | Create Architectural design |  |  |  |  |  | resources none → DucNM; SonNT |
| 61 | Update Architectural Design |  |  | 1d? → 1d |  |  |  |
| 82 | Submit progress report 2 | 2016-06-08 → 2016-06-06 (-2d) | 2016-06-08 → 2016-06-06 (-2d) |  |  |  |  |
| 83 | **Testing** |  |  | 6d? → 6d |  |  |  |
| 87 | Update test plan |  |  | 1d? → 1d |  |  |  |
| 91 | **Construction** | 2016-07-05 → 2016-07-04 (-1d) | 2016-08-16 → 2016-08-15 (-1d) |  |  | 41 → none |  |
| 92 | **Define Coding Standards** | 2016-07-05 → 2016-07-04 (-1d) | 2016-07-05 → 2016-07-04 (-1d) | 1d? → 1d | 0d → none |  |  |
| 93 | Create Coding Convention | 2016-07-05 → 2016-07-04 (-1d) | 2016-07-05 → 2016-07-04 (-1d) | 1d? → 1d | 8d → 0d |  |  |
| 94 | Create Code & UT Test review checklist | 2016-07-05 → 2016-07-04 (-1d) | 2016-07-05 → 2016-07-04 (-1d) | 1d? → 1d |  |  |  |
| 95 | **Screen Design** | 2016-07-05 → 2016-07-04 (-1d) | 2016-07-06 → 2016-07-05 (-1d) |  |  |  |  |
| 96 | Refine screen design document and prototype | 2016-07-05 → 2016-07-04 (-1d) | 2016-07-06 → 2016-07-05 (-1d) |  |  |  |  |
| 97 | **Coding & Unit test** | 2016-07-06 → 2016-07-05 (-1d) | 2016-07-29 → 2016-07-28 (-1d) |  |  |  |  |
| 98 | Structure core modules & source code common | 2016-07-06 → 2016-07-05 (-1d) | 2016-07-08 → 2016-07-07 (-1d) |  |  |  |  |
| 99 | **Client User Module** | 2016-07-11 → 2016-07-08 (-3d) | 2016-07-22 → 2016-07-21 (-1d) |  |  |  |  |
| 100 | Home Page Module | 2016-07-11 → 2016-07-08 (-3d) | 2016-07-13 → 2016-07-12 (-1d) |  |  |  |  |
| 101 | Login/ Logout Module | 2016-07-14 → 2016-07-13 (-1d) | 2016-07-15 → 2016-07-14 (-1d) |  |  |  |  |
| 102 | **Project module** | 2016-07-11 → 2016-07-08 (-3d) | 2016-07-20 → 2016-07-19 (-1d) |  |  |  |  |
| 103 | Create/manage a project Module | 2016-07-11 → 2016-07-08 (-3d) | 2016-07-15 → 2016-07-14 (-1d) |  |  |  |  |
| 104 | View/Back a project Module | 2016-07-18 → 2016-07-15 (-3d) | 2016-07-20 → 2016-07-19 (-1d) |  |  |  |  |
| 105 | User Personal Page Module | 2016-07-11 → 2016-07-08 (-3d) | 2016-07-13 → 2016-07-12 (-1d) |  |  |  |  |
| 106 | Search Module | 2016-07-21 → 2016-07-20 (-1d) | 2016-07-22 → 2016-07-21 (-1d) |  |  |  |  |
| 107 | Message Module | 2016-07-14 → 2016-07-13 (-1d) | 2016-07-19 → 2016-07-18 (-1d) |  |  |  |  |
| 108 | **Admin Module** | 2016-07-18 → 2016-07-15 (-3d) | 2016-07-29 → 2016-07-28 (-1d) |  |  |  |  |
| 109 | Login/ Logout module | 2016-07-18 → 2016-07-15 (-3d) | 2016-07-19 → 2016-07-18 (-1d) |  |  |  |  |
| 110 | Manage Users Module | 2016-07-20 → 2016-07-19 (-1d) | 2016-07-25 → 2016-07-22 (-3d) |  |  |  |  |
| 111 | Manage Projects Module | 2016-07-25 → 2016-07-22 (-3d) | 2016-07-29 → 2016-07-28 (-1d) |  |  |  |  |
| 112 | Manage Backings Module | 2016-07-20 → 2016-07-19 (-1d) | 2016-07-22 → 2016-07-21 (-1d) |  |  |  |  |
| 113 | Manage Categories Module | 2016-07-25 → 2016-07-22 (-3d) | 2016-07-27 → 2016-07-26 (-1d) |  |  |  |  |
| 114 | Mangage Silder Module | 2016-07-26 → 2016-07-25 (-1d) | 2016-07-28 → 2016-07-27 (-1d) |  |  |  |  |
| 115 | Complete Coding | 2016-07-29 → 2016-07-28 (-1d) | 2016-07-29 → 2016-07-28 (-1d) |  |  |  |  |
| 116 | Create Progress Report 4 | 2016-08-01 → 2016-07-29 (-3d) | 2016-08-01 → 2016-07-29 (-3d) | 1d? → 1d |  |  |  |
| 117 | Submit Progress Report 4 | 2016-08-01 → 2016-07-29 (-3d) | 2016-08-01 → 2016-07-29 (-3d) |  |  |  |  |
| 118 | **Testing** | 2016-07-06 → 2016-07-05 (-1d) | 2016-08-10 → 2016-08-09 (-1d) | 26d? → 26d | 0d → none |  |  |
| 119 | **Writing test case (continue)** | 2016-07-06 → 2016-07-05 (-1d) | 2016-07-19 → 2016-07-18 (-1d) |  |  |  |  |
| 120 | **System test case** | 2016-07-06 → 2016-07-05 (-1d) | 2016-07-12 → 2016-07-11 (-1d) |  |  |  |  |
| 121 | Create system test case | 2016-07-06 → 2016-07-05 (-1d) | 2016-07-08 → 2016-07-07 (-1d) |  |  |  |  |
| 122 | Review system test case | 2016-07-11 → 2016-07-08 (-3d) | 2016-07-11 → 2016-07-08 (-3d) |  |  |  |  |
| 123 | Update system test case | 2016-07-12 → 2016-07-11 (-1d) | 2016-07-12 → 2016-07-11 (-1d) |  |  |  |  |
| 124 | **Integration test case** | 2016-07-13 → 2016-07-12 (-1d) | 2016-07-19 → 2016-07-18 (-1d) |  |  |  |  |
| 125 | Create integration test case | 2016-07-13 → 2016-07-12 (-1d) | 2016-07-15 → 2016-07-14 (-1d) |  |  |  |  |
| 126 | Review integration test case | 2016-07-18 → 2016-07-15 (-3d) | 2016-07-18 → 2016-07-15 (-3d) |  |  |  |  |
| 127 | Update integration test case | 2016-07-19 → 2016-07-18 (-1d) | 2016-07-19 → 2016-07-18 (-1d) |  |  |  |  |
| 128 | Writing test case complete | 2016-07-19 → 2016-07-18 (-1d) | 2016-07-19 → 2016-07-18 (-1d) |  |  |  |  |
| 129 | **Execute Test Round 1** | 2016-07-20 → 2016-07-19 (-1d) | 2016-07-29 → 2016-07-28 (-1d) |  |  |  |  |
| 130 | Execute Integration Test | 2016-07-20 → 2016-07-19 (-1d) | 2016-07-22 → 2016-07-21 (-1d) |  |  |  |  |
| 131 | Fix bug Integration Test | 2016-07-25 → 2016-07-22 (-3d) | 2016-07-26 → 2016-07-25 (-1d) |  |  |  |  |
| 132 | Execute System Test | 2016-07-25 → 2016-07-22 (-3d) | 2016-07-27 → 2016-07-26 (-1d) |  |  |  |  |
| 133 | Fix bug System Test | 2016-07-28 → 2016-07-27 (-1d) | 2016-07-29 → 2016-07-28 (-1d) |  |  |  |  |
| 134 | Update Test Case | 2016-07-28 → 2016-07-27 (-1d) | 2016-07-28 → 2016-07-27 (-1d) |  |  |  |  |
| 135 | **Execute Test Round 2** | 2016-07-29 → 2016-07-28 (-1d) | 2016-08-09 → 2016-08-08 (-1d) |  |  |  |  |
| 136 | Execute Integration Test | 2016-07-29 → 2016-07-28 (-1d) | 2016-08-02 → 2016-08-01 (-1d) |  |  |  |  |
| 137 | Fix bug Integration Test | 2016-08-03 → 2016-08-02 (-1d) | 2016-08-04 → 2016-08-03 (-1d) |  |  |  |  |
| 138 | Execute System Test | 2016-08-03 → 2016-08-02 (-1d) | 2016-08-05 → 2016-08-04 (-1d) |  |  |  |  |
| 139 | Fix bug System Test | 2016-08-08 → 2016-08-05 (-3d) | 2016-08-09 → 2016-08-08 (-1d) |  |  |  |  |
| 140 | Create Test Report | 2016-08-10 → 2016-08-09 (-1d) | 2016-08-10 → 2016-08-09 (-1d) |  |  |  |  |
| 141 | Testing Complete | 2016-08-10 → 2016-08-09 (-1d) | 2016-08-10 → 2016-08-09 (-1d) |  |  |  |  |
| 142 | **Quality Control** | 2016-08-11 → 2016-08-10 (-1d) | 2016-08-15 → 2016-08-12 (-3d) |  |  |  |  |
| 143 | Create Quality Report | 2016-08-11 → 2016-08-10 (-1d) | 2016-08-12 → 2016-08-11 (-1d) |  |  |  |  |
| 144 | Review Quality Report | 2016-08-15 → 2016-08-12 (-3d) | 2016-08-15 → 2016-08-12 (-3d) |  |  |  |  |
| 145 | Update Quality Report | 2016-08-15 → 2016-08-12 (-3d) | 2016-08-15 → 2016-08-12 (-3d) |  |  |  |  |
| 146 | Create Progress Report 5 | 2016-08-16 → 2016-08-15 (-1d) | 2016-08-16 → 2016-08-15 (-1d) | 1d? → 1d |  |  |  |
| 147 | Submit Progress Report 5 | 2016-08-16 → 2016-08-15 (-1d) | 2016-08-16 → 2016-08-15 (-1d) |  |  |  |  |
